# Legyen_on_is_milliomos

How a schedule from MS Project changed from version to version. A marks actual dates.

## Version 1 (saved 2019-05-02, file Legyen_on_is_milliomos.mpp)

Note of the change: mpp elkészítése

| ID | Task | Duration | Start | Finish | Predecessors | Total float | Constraint |
| --- | --- | --- | --- | --- | --- | --- | --- |
| 1 | Feladatok kiosztása – 2019.03.03 | 0d | 2019-02-18 | 2019-02-18 |  | 54d |  |
| 2 | Adatbázis modell elkészítése | 1d? | 2019-02-18 | 2019-02-18 | 1 | 54d |  |
| 3 | Reláció sémák létrehozása | 1d? | 2019-02-18 | 2019-02-18 | 1 | 54d |  |
| 4 | Adatbázis megtervezése – 2019.03.10 | 0d | 2019-03-10 | 2019-03-10 |  | 40d | finish no earlier than 2019-03-10 |
| 5 | PHP szerver telepítése, üzemben tartása | 1d? | 2019-02-18 | 2019-02-18 |  | 54d |  |
| 6 | Szerver felállítása – 2019.03.17 | 0d | 2019-03-17 | 2019-03-17 |  | 35d | finish no earlier than 2019-03-17 |
| 7 | Felhasználói felület megtervezése – 2019.03.17 | 0d | 2019-03-17 | 2019-03-17 |  | 35d | finish no earlier than 2019-03-17 |
| 8 | Backend kialakítása PHP-val | 1d? | 2019-02-18 | 2019-02-18 |  | 54d |  |
| 9 | Backend létrehozása – 2019.03.24 | 0d | 2019-03-24 | 2019-03-24 |  | 30d | finish no earlier than 2019-03-24 |
| 10 | Frontend kialakítása HTML, CSS és JavaScript felhasználásával | 1d? | 2019-02-18 | 2019-02-18 |  | 54d |  |
| 11 | Frontend létrehozása –2019.03.24 | 0d | 2019-03-24 | 2019-03-24 | 14 | 30d | finish no earlier than 2019-03-24 |
| 12 | Grafikus felület kialakítása | 1d? | 2019-02-18 | 2019-02-18 |  | 54d |  |
| 13 | GUI kialakítása – 2019.04.21 | 0d | 2019-04-21 | 2019-04-21 |  | 10d | finish no earlier than 2019-04-21 |
| 14 | Alkalmazás alfa verzió megjelenése – 2019.03.24 | 0d | 2019-03-24 | 2019-03-24 |  | 30d | finish no earlier than 2019-03-24 |
| 15 | Adatbázis feltöltése | 1d? | 2019-02-18 | 2019-02-18 |  | 54d |  |
| 16 | Alkalmazás béta verzió megjelenése – 2019.04.14 | 0d | 2019-04-14 | 2019-04-14 |  | 15d | finish no earlier than 2019-04-14 |
| 17 | Végleges alkalmazás megjelenése – 2019.04.28 | 0d | 2019-04-28 | 2019-04-28 |  | 5d | finish no earlier than 2019-04-28 |
| 18 | Dokumentáció átadása – 2019.05.04 | 0d | 2019-05-04 | 2019-05-04 |  | 0d | finish no earlier than 2019-05-04 |
| 19 | Részletes dokumentáció | 1d? | 2019-05-03 | 2019-05-05 |  | 0d | finish no earlier than 2019-05-05 |

## Version 2 (saved 2019-05-02, file Legyen_on_is_milliomos.mpp)

Note of the change: mpp alakul

Last finish 2019-05-05 → 2019-05-06 (+1d).

Added:

| ID | Task | Duration | Start | Finish | Predecessors | Constraint | Resources |
| --- | --- | --- | --- | --- | --- | --- | --- |
| 1 | Csapat szervezés | 8d | 2019-02-18 | 2019-02-27 |  |  | Nagy Ádám [50%]; Bajnok Tamás [50%] |
| 2 | Feladat kiosztás | 1d | 2019-02-18 | 2019-02-18 |  |  | Nagy Ádám [50%]; Bajnok Tamás [50%] |
| 6 | Adatbázis tervezés | 4d | 2019-03-06 | 2019-03-11 | 5 |  | Bajnok Tamás; Tóth Tamás |
| 10 | Felhasználói felület tervezése | 10d | 2019-03-04 | 2019-03-15 | 3 |  | Varsa László |
| 16 | Alkalmazás alfa verzió megjelenése – Megtörténik | 0d | 2019-03-24 | 2019-03-24 | 14, 11 | finish no earlier than 2019-03-24 |  |
| 21 | Tesztelés hibák javítása | 10d | 2019-04-15 | 2019-04-26 | 20 |  | Bajnok Tamás [50%]; Nagy Ádám [50%]; Tóth Tamás [50%] |

Removed: 14 Alkalmazás alfa verzió megjelenése – 2019.03.24

Changed:

| ID | Task | Start | Finish | Duration | Total float | Predecessors | Other |
| --- | --- | --- | --- | --- | --- | --- | --- |
| 3 | Feladatok kiosztása – Elkészül | 2019-02-18 → 2019-03-03 (+13d) | 2019-02-18 → 2019-03-03 (+13d) |  | 54d → 11d | none → 1, 2 | was named Feladatok kiosztása – 2019.03.03; constraint none → finish no earlier than 2019-03-03 |
| 4 | Adatbázis modell elkészítése | 2019-02-18 → 2019-03-04 (+14d) | 2019-02-18 → 2019-03-05 (+15d) | 1d? → 2d | 54d → 44d |  | resources none → Bajnok Tamás |
| 5 | Reláció sémák létrehozása | 2019-02-18 → 2019-03-04 (+14d) | 2019-02-18 → 2019-03-05 (+15d) | 1d? → 2d | 54d → 35d |  | resources none → Tóth Tamás |
| 7 | Adatbázis megtervezése – Elkészül | 2019-03-10 → 2019-03-11 (+1d) | 2019-03-10 → 2019-03-11 (+1d) |  | 40d → 35d | none → 6 | was named Adatbázis megtervezése – 2019.03.10 |
| 8 | PHP szerver telepítése, üzemben tartása | 2019-02-18 → 2019-03-12 (+22d) | 2019-02-18 → 2019-03-18 (+28d) | 1d? → 5d | 54d → 35d | none → 7 | resources none → Bajnok Tamás |
| 9 | Szerver felállítása – Elkészül | 2019-03-17 → 2019-03-18 (+1d) | 2019-03-17 → 2019-03-18 (+1d) |  |  | none → 8 | was named Szerver felállítása – 2019.03.17 |
| 11 | Felhasználói felület megtervezése – Elkészül |  |  |  | 35d → 10d | none → 10 | was named Felhasználói felület megtervezése – 2019.03.17 |
| 12 | Backend kialakítása PHP-val | 2019-02-18 → 2019-03-18 (+28d) | 2019-02-18 → 2019-03-22 (+32d) | 1d? → 5d | 54d → 31d | none → 11 | resources none → Tóth Tamás |
| 13 | Backend létrehozása – Elkészül |  |  |  | 30d → 31d | none → 12 | was named Backend létrehozása – 2019.03.24 |
| 14 | Frontend kialakítása HTML, CSS és JavaScript felhasználásával | 2019-02-18 → 2019-03-18 (+28d) | 2019-02-18 → 2019-03-22 (+32d) | 1d? → 5d | 54d → 11d | none → 11 | resources none → Nagy Ádám; Szabó Attila |
| 15 | Frontend létrehozása –Elkészül |  |  |  | 30d → 11d | Alkalmazás alfa verzió megjelenése – 2019.03.24 → 14 | was named Frontend létrehozása –2019.03.24 |
| 17 | Grafikus felület kialakítása | 2019-02-18 → 2019-03-25 (+35d) | 2019-02-18 → 2019-04-19 (+60d) | 1d? → 20d | 54d → 11d | none → 15, 16 | resources none → Varsa László |
| 18 | GUI kialakítása – 2019.04.21 |  |  |  |  | none → 17 |  |
| 19 | Adatbázis feltöltése | 2019-02-18 → 2019-03-25 (+35d) | 2019-02-18 → 2019-03-29 (+39d) | 1d? → 5d | 54d → 16d | none → 3, 14 | resources none → Szabó Attila; Nagy Ádám |
| 20 | Alkalmazás béta verzió megjelenése – 2019.04.14 |  |  |  | 15d → 6d | none → 19 |  |
| 22 | Végleges alkalmazás megjelenése – 2019.04.28 |  |  |  | 5d → 6d | none → 21 |  |
| 23 | Részletes dokumentáció | 2019-05-03 → 2019-05-01 (-2d) | 2019-05-05 → 2019-05-06 (+1d) | 1d? → 4d |  |  | constraint finish no earlier than 2019-05-05 → start no earlier than 2019-05-01; resources none → Nagy Ádám; Szabó Attila |
| 24 | Dokumentáció átadása - Megtörténik | 2019-05-04 → 2019-05-06 (+2d) | 2019-05-04 → 2019-05-06 (+2d) |  |  | none → 23 | was named Dokumentáció átadása – 2019.05.04; constraint finish no earlier than 2019-05-04 → finish no earlier than 2019-05-05 |

## Version 3 (data date 2019-05-03, saved 2019-05-03, file Legyen_on_is_milliomos.mpp)

Note of the change: mpp alapterv állapotsáv és nyomtatás

Last finish stays 2019-05-06.

Changed:

| ID | Task | Total float | Predecessors | Other |
| --- | --- | --- | --- | --- |
| 1 | Csapat szervezés | 13d → 12d |  | baseline start none → 2019-02-18; baseline finish none → 2019-02-27 |
| 2 | Feladat kiosztás | 20d → 19d |  | baseline start none → 2019-02-18; baseline finish none → 2019-02-18 |
| 3 | Feladatok kiosztása – Elkészül | 11d → 10d |  | baseline start none → 2019-03-03; baseline finish none → 2019-03-03 |
| 4 | Adatbázis modell elkészítése | 44d → 35d |  | baseline start none → 2019-03-04; baseline finish none → 2019-03-05 |
| 5 | Reláció sémák létrehozása |  | 3 → 4SS | baseline start none → 2019-03-04; baseline finish none → 2019-03-05 |
| 6 | Adatbázis tervezés |  |  | baseline start none → 2019-03-06; baseline finish none → 2019-03-11 |
| 7 | Adatbázis megtervezése – Elkészül |  |  | baseline start none → 2019-03-11; baseline finish none → 2019-03-11 |
| 8 | PHP szerver telepítése, üzemben tartása |  |  | baseline start none → 2019-03-12; baseline finish none → 2019-03-18 |
| 9 | Szerver felállítása – Elkészül |  |  | baseline start none → 2019-03-18; baseline finish none → 2019-03-18 |
| 10 | Felhasználói felület tervezése | 11d → 10d |  | baseline start none → 2019-03-04; baseline finish none → 2019-03-15 |
| 11 | Felhasználói felület megtervezése – Elkészül |  |  | baseline start none → 2019-03-17; baseline finish none → 2019-03-17 |
| 12 | Backend kialakítása PHP-val | 31d → 10d |  | baseline start none → 2019-03-18; baseline finish none → 2019-03-22 |
| 13 | Backend létrehozása – Elkészül |  |  | baseline start none → 2019-03-24; baseline finish none → 2019-03-24 |
| 14 | Frontend kialakítása HTML, CSS és JavaScript felhasználásával | 11d → 10d | 11 → 12SS | baseline start none → 2019-03-18; baseline finish none → 2019-03-22 |
| 15 | Frontend létrehozása –Elkészül |  |  | baseline start none → 2019-03-24; baseline finish none → 2019-03-24 |
| 16 | Alkalmazás alfa verzió megjelenése – Megtörténik |  |  | baseline start none → 2019-03-24; baseline finish none → 2019-03-24 |
| 17 | Grafikus felület kialakítása |  |  | baseline start none → 2019-03-25; baseline finish none → 2019-04-19 |
| 18 | GUI kialakítása – 2019.04.21 |  |  | baseline start none → 2019-04-21; baseline finish none → 2019-04-21 |
| 19 | Adatbázis feltöltése |  |  | baseline start none → 2019-03-25; baseline finish none → 2019-03-29 |
| 20 | Alkalmazás béta verzió megjelenése – 2019.04.14 |  |  | baseline start none → 2019-04-14; baseline finish none → 2019-04-14 |
| 21 | Tesztelés hibák javítása |  |  | baseline start none → 2019-04-15; baseline finish none → 2019-04-26 |
| 22 | Végleges alkalmazás megjelenése – 2019.04.28 |  |  | baseline start none → 2019-04-28; baseline finish none → 2019-04-28 |
| 23 | Részletes dokumentáció |  |  | baseline start none → 2019-05-01; baseline finish none → 2019-05-06 |
| 24 | Dokumentáció átadása - Megtörténik |  |  | baseline start none → 2019-05-06; baseline finish none → 2019-05-06 |

## Version 4 (data date 2019-05-03, saved 2019-05-03, file Legyen_on_is_milliomos.mpp)

Note of the change: mpp befejezés módosítva

Last finish 2019-05-06 → 2019-05-05 (-1d).

Changed:

| ID | Task | Start | Finish | Duration | Predecessors | Other |
| --- | --- | --- | --- | --- | --- | --- |
| 23 | Részletes dokumentáció |  | 2019-05-06 → 2019-05-03 (-3d) | 4d → 3d | none → 19 | constraint start no earlier than 2019-05-01 → finish no earlier than 2019-05-03 |
| 24 | Dokumentáció átadása - Megtörténik | 2019-05-06 → 2019-05-05 (-1d) | 2019-05-06 → 2019-05-05 (-1d) |  |  |  |

## Version 5 (data date 2019-05-03, saved 2019-05-03, file Legyen_on_is_milliomos_V2.0.mpp)

Note of the change: mpp v2.0

Last finish stays 2019-05-05.

Added:

| ID | Task | Duration | Start | Finish |
| --- | --- | --- | --- | --- |
| 1 | **Tervezés** | 16d | 2019-02-18 | 2019-03-11 |
| 9 | **Alkalmazás fejlesztése** | 35d | 2019-03-04 | 2019-04-21 |
| 10 | **Backend** | 15d | 2019-03-04 | 2019-03-24 |
| 17 | **Frontend** | 25d | 2019-03-18 | 2019-04-21 |
| 23 | **Véglegesítés** | 30d | 2019-03-25 | 2019-05-05 |

Changed:

| ID | Task | Predecessors | Other |
| --- | --- | --- | --- |
| 28 | Részletes dokumentáció | 24 → none | constraint finish no earlier than 2019-05-03 → start no earlier than 2019-05-01 |

## Version 6 (data date 2019-05-03, saved 2019-05-03, file Legyen_on_is_milliomos_V2.0.mpp)

Note of the change: dokumentáció

Last finish stays 2019-05-05. Complete tasks 0 → 24.

Changed:

| ID | Task | Start | Finish | Complete | Total float |
| --- | --- | --- | --- | --- | --- |
| 1 | **Tervezés** | 2019-02-18 A | 2019-03-11 A | 0% → 100% | 12d → none |
| 2 | Csapat szervezés | 2019-02-18 A | 2019-02-27 A | 0% → 100% | 13d → none |
| 3 | Feladat kiosztás | 2019-02-18 A | 2019-02-18 A | 0% → 100% | 20d → none |
| 4 | Feladatok kiosztása – Elkészül | 2019-03-03 A | 2019-03-03 A | 0% → 100% | 11d → none |
| 5 | Adatbázis modell elkészítése | 2019-03-04 A | 2019-03-05 A | 0% → 100% | 35d → none |
| 6 | Reláció sémák létrehozása | 2019-03-04 A | 2019-03-05 A | 0% → 100% | 35d → none |
| 7 | Adatbázis tervezés | 2019-03-06 A | 2019-03-11 A | 0% → 100% | 35d → none |
| 8 | Adatbázis megtervezése – Elkészül | 2019-03-11 A | 2019-03-11 A | 0% → 100% | 35d → none |
| 9 | **Alkalmazás fejlesztése** | 2019-03-04 A | 2019-04-21 A | 0% → 100% | 10d → none |
| 10 | **Backend** | 2019-03-04 A | 2019-03-24 A | 0% → 100% | 10d → none |
| 11 | PHP szerver telepítése, üzemben tartása | 2019-03-12 A | 2019-03-18 A | 0% → 100% | 35d → none |
| 12 | Szerver felállítása – Elkészül | 2019-03-18 A | 2019-03-18 A | 0% → 100% | 35d → none |
| 13 | Felhasználói felület tervezése | 2019-03-04 A | 2019-03-15 A | 0% → 100% | 11d → none |
| 14 | Felhasználói felület megtervezése – Elkészül | 2019-03-17 A | 2019-03-17 A | 0% → 100% | 11d → none |
| 15 | Backend kialakítása PHP-val | 2019-03-18 A | 2019-03-22 A | 0% → 100% | 11d → none |
| 16 | Backend létrehozása – Elkészül | 2019-03-24 A | 2019-03-24 A | 0% → 100% | 31d → none |
| 17 | **Frontend** | 2019-03-18 A | 2019-04-21 A | 0% → 100% | 10d → none |
| 18 | Frontend kialakítása HTML, CSS és JavaScript felhasználásával | 2019-03-18 A | 2019-03-22 A | 0% → 100% | 11d → none |
| 19 | Frontend létrehozása –Elkészül | 2019-03-24 A | 2019-03-24 A | 0% → 100% | 11d → none |
| 20 | Alkalmazás alfa verzió megjelenése – Megtörténik | 2019-03-24 A | 2019-03-24 A | 0% → 100% | 11d → none |
| 21 | Grafikus felület kialakítása | 2019-03-25 A | 2019-04-19 A | 0% → 100% | 11d → none |
| 22 | GUI kialakítása – 2019.04.21 | 2019-04-21 A | 2019-04-21 A | 0% → 100% | 11d → none |
| 23 | **Véglegesítés** | 2019-03-25 A | 2019-05-05 A | 0% → 100% | 0d → none |
| 24 | Adatbázis feltöltése | 2019-03-25 A | 2019-03-29 A | 0% → 100% | 16d → none |
| 25 | Alkalmazás béta verzió megjelenése – 2019.04.14 | 2019-04-14 A | 2019-04-14 A | 0% → 100% | 6d → none |
| 26 | Tesztelés hibák javítása | 2019-04-15 A | 2019-04-26 A | 0% → 100% | 6d → none |
| 27 | Végleges alkalmazás megjelenése – 2019.04.28 | 2019-04-28 A | 2019-04-28 A | 0% → 100% | 6d → none |
| 28 | Részletes dokumentáció | 2019-05-01 A | 2019-05-03 A | 0% → 100% | 0d → none |
| 29 | Dokumentáció átadása - Megtörténik | 2019-05-05 A | 2019-05-05 A | 0% → 100% | 0d → none |
